# LaborGuru-SPM

Schedule from MS Project, 2008-05-05 to 2008-10-09.

## Calendars

- Standard: Mon-Fri 08:00-12:00, 13:00-17:00; Sat-Sun off.

## Resources

| Resource |
| --- |
| Dev1 |
| Dev2 |
| Dev3 |
| Ñoko |

## Schedule

| ID | WBS | Task | Duration | Start | Finish | Predecessors | Total slack | Free slack | Constraint | Resources | Work |
| --- | --- | --- | --- | --- | --- | --- | --- | --- | --- | --- | --- |
| 1 | 1 | **Labor Guru SPM** | 114d | 2008-05-05 | 2008-10-09 |  | 0d |  |  |  | 1496h |
| 2 | 1.1 | **Preparación de Ambiente** | 8d | 2008-05-05 | 2008-05-14 |  | 23d |  |  |  |  |
| 3 | 1.1.1 | Instalación Base de Datos | 1d | 2008-05-05 | 2008-05-05 |  | 23d | 0d |  |  |  |
| 4 | 1.1.2 | Script de build y esqueleto proyecto | 2d | 2008-05-06 | 2008-05-07 | 3 | 23d | 0d |  |  |  |
| 5 | 1.1.3 | I+D Seguridad, Motor de Reglas, MVC, Reporting Tool | 5d | 2008-05-08 | 2008-05-14 | 4 | 23d |  |  |  |  |
| 6 | 1.2 | **Requerimientos y Análisis** | 31d | 2008-05-05 | 2008-06-16 |  | 0d |  |  | Ñoko | 248h |
| 7 | 1.2.1 | Perfiles y accesos | 2d | 2008-05-05 | 2008-05-06 |  | 0d |  |  |  |  |
| 8 | 1.2.2 | ABM Usuarios | 2d | 2008-05-07 | 2008-05-08 | 7 | 0d |  | as late as possible |  |  |
| 9 | 1.2.3 | ABM Locales Gastronómicos | 2d | 2008-05-09 | 2008-05-12 | 8 | 0d |  |  |  |  |
| 10 | 1.2.4 | ABM Datos Referencia | 2d | 2008-05-13 | 2008-05-14 | 9 | 0d |  |  |  |  |
| 11 | 1.2.5 | ABM Datos Ingreso al Motor Experto | 5d | 2008-05-15 | 2008-05-21 | 10 | 0d |  |  |  |  |
| 12 | 1.2.6 | ABM Empleados | 2d | 2008-05-22 | 2008-05-23 | 11 | 0d |  |  |  |  |
| 13 | 1.2.7 | Motor Experto | 4d | 2008-05-26 | 2008-05-29 | 12 | 0d |  |  |  |  |
| 14 | 1.2.8 | Carga del horario semanal | 2d | 2008-05-30 | 2008-06-02 | 13 | 0d |  |  |  |  |
| 15 | 1.2.9 | Reportes | 3d | 2008-06-03 | 2008-06-05 | 14 | 0d |  |  |  |  |
| 16 | 1.2.10 | Elaboración documentación de análisis | 5d | 2008-06-06 | 2008-06-12 | 15 | 0d |  |  |  |  |
| 17 | 1.2.11 | Revisión de documentación de análisis | 2d | 2008-06-13 | 2008-06-16 | 16 | 0d |  |  |  |  |
| 18 | 1.3 | **Diseño Gráfico** | 2d | 2008-05-05 | 2008-05-06 |  | 112d |  |  |  |  |
| 19 | 1.3.1 | Definición del look & feel | 2d | 2008-05-05 | 2008-05-06 |  | 112d |  |  |  |  |
| 20 | 1.4 | **Diseño y Arquitectura** | 9d | 2008-06-17 | 2008-06-27 | 6, 2 | 0d |  |  |  |  |
| 21 | 1.4.1 | Diseño de diagrama de clases base | 1d | 2008-06-17 | 2008-06-17 |  | 0d |  |  |  |  |
| 22 | 1.4.2 | Diseño del motor experto | 5d | 2008-06-18 | 2008-06-24 | 21 | 0d |  |  |  |  |
| 23 | 1.4.3 | Diseño de base de datos | 2d | 2008-06-25 | 2008-06-26 | 22 | 0d |  |  |  |  |
| 24 | 1.4.4 | Definición de técnología a utilizar | 1d | 2008-06-27 | 2008-06-27 | 23 | 0d |  |  |  |  |

Notes:
- 11: Incluye los requerimientos de la primer interfaz de obtención de datos
- 19: Siempre y cuando se acepte el diseño de la demo (o una variante del mismo). En caso de tener que realizar el trabajo de diseño gráfico, esta tarea quedará reemplazada con las tareas del diseñador gráfico.

| ID | WBS | Task | Duration | Start | Finish | Predecessors | Total slack | Free slack | Resources | Work |
| --- | --- | --- | --- | --- | --- | --- | --- | --- | --- | --- |
| 25 | 1.5 | **Construcción** | 50d | 2008-06-30 | 2008-09-05 | 20 | 0d |  |  | 792h |
| 26 | 1.5.1 | Desarrollo de clases de infraestructura | 6d | 2008-06-30 | 2008-07-07 |  | 0d |  |  |  |
| 27 | 1.5.2 | Perfiles y accesos | 6d | 2008-07-08 | 2008-07-15 | 26 | 4d | 0d | Dev1 | 48h |
| 28 | 1.5.3 | ABM Usuarios | 7d | 2008-07-08 | 2008-07-16 | 26 | 0d |  | Dev2 | 56h |
| 29 | 1.5.4 | ABM Locales Gastronómicos | 6d | 2008-07-08 | 2008-07-15 | 26 | 21d | 0d | Dev3 | 48h |
| 30 | 1.5.5 | ABM Datos Referencia | 7d | 2008-07-16 | 2008-07-24 | 27 | 4d | 0d | Dev1 | 56h |
| 31 | 1.5.6 | ABM Datos Ingreso al Motor Experto | 15d | 2008-07-17 | 2008-08-06 | 28 | 0d |  | Dev2 | 120h |
| 32 | 1.5.7 | ABM Empleados | 5d | 2008-07-16 | 2008-07-22 | 29 | 21d | 0d | Dev3 | 40h |
| 33 | 1.5.8 | Motor Experto | 15d | 2008-07-25 | 2008-08-14 | 30 | 4d | 0d | Dev1 | 120h |
| 34 | 1.5.9 | Carga del horario semanal | 10d | 2008-08-07 | 2008-08-20 | 31 | 0d |  | Dev2 | 80h |
| 35 | 1.5.10 | **Reportes** | 12d | 2008-08-21 | 2008-09-05 | 32, 34, 33 | 0d |  |  | 224h |
| 36 | 1.5.10.1 | Pronóstico de empleados por hora del día | 4d | 2008-08-21 | 2008-08-26 |  | 0d |  | Dev1 | 32h |
| 37 | 1.5.10.2 | Pronóstico de empleados por puesto por hora del día | 4d | 2008-08-21 | 2008-08-26 |  | 4d | 0d | Dev2 | 32h |
| 38 | 1.5.10.3 | Impresión del horario semanal | 4d | 2008-08-21 | 2008-08-26 |  | 4d | 0d | Dev3 | 32h |
| 39 | 1.5.10.4 | Reporte de ventas en función del tiempo | 4d | 2008-08-27 | 2008-09-01 | 36 | 0d |  | Dev1 | 32h |
| 40 | 1.5.10.5 | Reporte de ventas de productos en función del tiempo | 4d | 2008-08-27 | 2008-09-01 | 37 | 4d |  | Dev2 | 32h |
| 41 | 1.5.10.6 | Gráfico de barras mostrando la cantidad total de horas cargadas (Servicio y Preparación) vs. el mínimo necesario de horas que surge como salida del sistema experto | 4d | 2008-08-27 | 2008-09-01 | 38 | 4d |  | Dev3 | 32h |
| 42 | 1.5.10.7 | Reporte mostrando la carga actual de la dotación vs. la ideal sugerida por la herramienta | 4d | 2008-09-02 | 2008-09-05 | 39 | 0d |  | Dev1 | 32h |
| 43 | 1.6 | **Pruebas y Ajustes** | 53d | 2008-07-16 | 2008-09-26 |  | 0d |  |  | 456h |
| 44 | 1.6.1 | Prueba Perfiles y accesos | 2d | 2008-07-16 | 2008-07-17 | 27 | 49d | 5d |  |  |
| 45 | 1.6.2 | Ajuste Perfiles y accesos | 2d | 2008-07-25 | 2008-07-28 | 44, 30 | 44d |  | Dev1 | 16h |
| 46 | 1.6.3 | Prueba ABM Usuarios | 2d | 2008-07-17 | 2008-07-18 | 28 | 33d | 13d |  |  |
| 47 | 1.6.4 | Ajuste ABM Usuarios | 2d | 2008-08-07 | 2008-08-08 | 31, 46 | 20d | 3d | Dev2 | 16h |
| 48 | 1.6.5 | Prueba ABM Locales Gastronómicos | 2d | 2008-07-16 | 2008-07-17 | 29 | 37d | 3d |  |  |
| 49 | 1.6.6 | Ajuste ABM Locales Gastronómicos | 2d | 2008-07-23 | 2008-07-24 | 32, 48 | 34d | 0d | Dev3 | 16h |
| 50 | 1.6.7 | Prueba ABM Datos Referencia | 2d | 2008-07-25 | 2008-07-28 | 30 | 30d | 17d |  |  |
| 51 | 1.6.8 | Ajuste ABM Datos Referencia | 2d | 2008-08-21 | 2008-08-22 | 34, 50 | 13d | 0d | Dev1 | 16h |
| 52 | 1.6.9 | Prueba ABM Datos Ingreso al Motor Experto | 5d | 2008-08-07 | 2008-08-13 | 31 | 17d | 0d |  |  |
| 53 | 1.6.10 | Ajuste ABM Datos Ingreso al Motor Experto | 5d | 2008-08-14 | 2008-08-20 | 47, 52 | 17d |  | Dev2 | 40h |
| 54 | 1.6.11 | Prueba ABM Empleados | 2d | 2008-07-23 | 2008-07-24 | 32 | 34d | 0d |  |  |
| 55 | 1.6.12 | Ajuste ABM Empleados | 2d | 2008-07-25 | 2008-07-28 | 49, 54 | 34d |  | Dev3 | 16h |
| 56 | 1.6.13 | Prueba Motor Experto | 5d | 2008-08-15 | 2008-08-21 | 33 | 16d | 1d |  |  |
| 57 | 1.6.14 | Ajuste Motor Experto | 10d | 2008-08-25 | 2008-09-05 | 51, 56 | 15d |  | Dev1 | 80h |
| 58 | 1.6.15 | Prueba Carga del horario semanal | 3d | 2008-08-21 | 2008-08-25 | 34 | 12d | 0d |  |  |
| 59 | 1.6.16 | Ajuste Carga del horario semanal | 2d | 2008-08-26 | 2008-08-27 | 51, 58 | 12d |  | Dev2 | 16h |
| 60 | 1.6.17 | Prueba Reportes | 5d | 2008-09-08 | 2008-09-12 | 35 | 0d |  |  |  |
| 61 | 1.6.18 | Ajuste Reportes | 10d | 2008-09-15 | 2008-09-26 | 53, 55, 59, 60 | 0d |  | Dev1; Dev2; Dev3 | 240h |

| ID | WBS | Task | Duration | Start | Finish | Predecessors | Total slack |
| --- | --- | --- | --- | --- | --- | --- | --- |
| 62 | 1.7 | **Puesta en Producción** | 9d | 2008-09-29 | 2008-10-09 | 43 | 0d |
| 63 | 1.7.1 | Preparación del ambiente productivo | 2d | 2008-09-29 | 2008-09-30 |  | 0d |
| 64 | 1.7.2 | Creación de la base de datos | 1d | 2008-10-01 | 2008-10-01 | 63 | 0d |
| 65 | 1.7.3 | Pasaje de la aplicación | 1d | 2008-10-02 | 2008-10-02 | 64 | 0d |
| 66 | 1.7.4 | Prueba en ambiente productivo | 5d | 2008-10-03 | 2008-10-09 | 65 | 0d |
